# Software Development

Schedule from MS Project, 2025-10-29 to 2025-11-24, A marks actual dates.

## Calendars

- Standard: Mon-Fri 08:00-12:00, 13:00-17:00; Sat-Sun off.

## Resources

| Resource | Group |
| --- | --- |
| Project Manager |  |
| UI Designer |  |
| M.Latif-Arfani | Developer |

## Schedule

| ID | WBS | Task | Duration | Start | Finish | Predecessors | Complete | Remaining | Total slack | Resources | Work | Actual work |
| --- | --- | --- | --- | --- | --- | --- | --- | --- | --- | --- | --- | --- |
| 1 | 1 | **Initiation & Planning** | 1.31d | 2025-10-29 08:00 A | 2025-10-30 10:30 |  | 10% | 1.19d | 0d |  | 10.5h | 1h |
| 2 | 1.1 | Conduct market research and competitor analysis to understand user needs | 4h | 2025-10-29 08:00 | 2025-10-29 12:00 |  |  |  | 6.5d | M.Latif-Arfani | 4h |  |
| 3 | 1.2 | Identify and define target user personas | 1h | 2025-10-29 13:00 A | 2025-10-29 14:00 A | 2 | 100% |  |  | M.Latif-Arfani | 1h | 1h |
| 4 | 1.3 | Define MVP feature list and prioritize functionalities | 0.5h | 2025-10-29 14:00 | 2025-10-29 14:30 | 3 |  |  | 0d | M.Latif-Arfani | 0.5h |  |
| 5 | 1.4 | Choose app architecture, libraries, and technology stack | 0.5h | 2025-10-29 14:30 | 2025-10-29 15:00 | 4 |  |  | 0d | M.Latif-Arfani | 0.5h |  |
| 6 | 1.5 | Set up local + GitHub repository for version control | 0.5h | 2025-10-29 15:00 | 2025-10-29 15:30 | 5 |  |  | 0d | M.Latif-Arfani | 0.5h |  |
| 7 | 1.6 | Prepare project management plan (MS Project) | 3h | 2025-10-29 15:30 | 2025-10-30 09:30 | 6 |  |  | 0d | M.Latif-Arfani | 3h |  |
| 8 | 1.7 | Define project milestones, timelines, and expected deliverables | 1h | 2025-10-30 09:30 | 2025-10-30 10:30 | 7 |  |  | 0d | M.Latif-Arfani | 1h |  |
| 9 | 2 | **UI/UX Design** | 5.5d | 2025-10-30 10:30 | 2025-11-06 15:30 | 1 |  |  | 0d |  | 44h |  |
| 10 | 2.1 | Document app style guide, including colors, typography, and icons | 4d | 2025-10-30 10:30 | 2025-11-05 10:30 |  |  |  | 0d | M.Latif-Arfani | 32h |  |
| 11 | 2.2 | Design all screens in Figma to create interactive prototypes | 8h | 2025-11-05 10:30 | 2025-11-06 10:30 | 10 |  |  | 0d | M.Latif-Arfani | 8h |  |
| 12 | 2.3 | Map out navigation and interaction flows for all user journeys | 4h | 2025-11-06 10:30 | 2025-11-06 15:30 | 11 |  |  | 0d | M.Latif-Arfani | 4h |  |
| 13 | 3 | **Architecture and Setup** | 1.25d | 2025-11-06 15:30 | 2025-11-10 08:30 | 5 |  |  | 0d |  | 24h |  |
| 14 | 3.1 | Initialize Android Studio project with proper modules | 2h | 2025-11-06 15:30 | 2025-11-07 08:30 | 9 |  |  | 0d | M.Latif-Arfani | 2h |  |
| 15 | 3.2 | Set up Hilt for dependency injection | 4h | 2025-11-07 08:30 | 2025-11-07 13:30 | 14 |  |  | 0d | M.Latif-Arfani | 4h |  |
| 16 | 3.3 | Configure Room Database for local storage | 4h | 2025-11-07 08:30 | 2025-11-07 13:30 | 14 |  |  | 0d | M.Latif-Arfani | 4h |  |
| 17 | 3.4 | Implement Navigation Compose for screen routing | 4h | 2025-11-07 08:30 | 2025-11-07 13:30 | 14 |  |  | 0d | M.Latif-Arfani | 4h |  |
| 18 | 3.5 | Apply Material 3 theme with typography and color scheme | 4h | 2025-11-07 08:30 | 2025-11-07 13:30 | 14 |  |  | 0d | M.Latif-Arfani | 4h |  |
| 19 | 3.6 | Configure `DataStore` for storing user preferences | 2h | 2025-11-07 08:30 | 2025-11-07 10:30 | 14 |  |  | 0.25d | M.Latif-Arfani | 2h |  |
| 20 | 3.7 | Review and organize initial code structure for development | 4h | 2025-11-07 13:30 | 2025-11-10 08:30 | 15, 16, 17, 18, 19 |  |  | 0d | M.Latif-Arfani | 4h |  |
| 21 | 4 | **Development (Core Features)** | 7.5d | 2025-11-10 08:30 | 2025-11-19 13:30 | 13 |  |  | 0d |  | 72h |  |
| 22 | 4.1 | **Sprint 1 – Core Data & UI Setup** | 2.5d | 2025-11-10 08:30 | 2025-11-12 13:30 | 20 |  |  | 0d |  | 24h |  |
| 23 | 4.1.1 | Define Room entities: `Transaction`, `Category`, `User` | 4h | 2025-11-10 08:30 | 2025-11-10 13:30 |  |  |  | 0d | M.Latif-Arfani | 4h |  |
| 24 | 4.1.2 | Implement Repository and ViewModel layers | 4h | 2025-11-10 13:30 | 2025-11-11 08:30 | 23 |  |  | 0d | M.Latif-Arfani | 4h |  |
| 25 | 4.1.3 | Build Add Transaction and Transaction List screens | 6h | 2025-11-11 08:30 | 2025-11-11 15:30 | 24 |  |  | 0d | M.Latif-Arfani | 6h |  |
| 26 | 4.1.4 | Implement full CRUD operations (Create, Read, Update, Delete) | 6h | 2025-11-11 15:30 | 2025-11-12 13:30 | 25 |  |  | 0d | M.Latif-Arfani | 6h |  |
| 27 | 4.1.5 | Set up navigation graph for all screens | 4h | 2025-11-11 15:30 | 2025-11-12 10:30 | 25 |  |  | 0.25d | M.Latif-Arfani | 4h |  |

| ID | WBS | Task | Type | Duration | Start | Finish | Predecessors | Total slack | Free slack | Resources | Work |
| --- | --- | --- | --- | --- | --- | --- | --- | --- | --- | --- | --- |
| 28 | 4.2 | **Sprint 2 – Dashboard & Analytics** |  | 3d | 2025-11-12 13:30 | 2025-11-17 13:30 | 22 | 0d |  |  | 24h |
| 29 | 4.2.1 | Develop dashboard showing income, expenses, and total balance |  | 6h | 2025-11-12 13:30 | 2025-11-13 10:30 | 26 | 0d |  | M.Latif-Arfani | 6h |
| 30 | 4.2.2 | Create reports with Pie and Bar charts |  | 6h | 2025-11-13 10:30 | 2025-11-14 08:30 | 29 | 0d |  | M.Latif-Arfani | 6h |
| 31 | 4.2.3 | Implement filtering by date and category |  | 6h | 2025-11-14 08:30 | 2025-11-14 15:30 | 30 | 0d |  | M.Latif-Arfani | 6h |
| 32 | 4.2.4 | Visualize expense trends and summaries |  | 6h | 2025-11-14 15:30 | 2025-11-17 13:30 | 30, 31 | 0d |  | M.Latif-Arfani | 6h |
| 33 | 4.3 | **Sprint 3 – App Enhancements** |  | 1d | 2025-11-17 13:30 | 2025-11-18 13:30 | 28 | 0d |  |  | 16h |
| 34 | 4.3.1 | Add user preferences for currency and theme mode |  | 4h | 2025-11-17 13:30 | 2025-11-18 08:30 | 19 | 0.5d |  | M.Latif-Arfani | 4h |
| 35 | 4.3.2 | Implement data export options (CSV, JSON) |  | 4h | 2025-11-17 13:30 | 2025-11-18 08:30 | 26 | 0.5d |  | M.Latif-Arfani | 4h |
| 36 | 4.3.3 | Set up backup and restore functionality (local storage or Firebase) |  | 8h | 2025-11-17 13:30 | 2025-11-18 13:30 | 19, 26 | 0d |  | M.Latif-Arfani | 8h |
| 37 | 4.4 | Optimize performance and refine UI for better user experience |  | 8h | 2025-11-18 13:30 | 2025-11-19 13:30 | 22, 28, 33 | 0d |  | M.Latif-Arfani | 8h |
| 38 | 5 | **Backend Integration (Optional / Future Scope)** |  | 2d | 2025-11-12 13:30 | 2025-11-14 13:30 | 22 | 6d |  |  | 24h |
| 39 | 5.1 | Design backend schema (User, Transaction, Category) |  | 4h | 2025-11-12 13:30 | 2025-11-13 08:30 |  | 6d | 0d | M.Latif-Arfani | 4h |
| 40 | 5.2 | Connect the Android app to the backend (Firebase) |  | 8h | 2025-11-13 08:30 | 2025-11-14 08:30 | 39 | 6.5d |  | M.Latif-Arfani | 8h |
| 41 | 5.3 | Implement WorkManager for background data sync |  | 8h | 2025-11-13 08:30 | 2025-11-14 08:30 | 39 | 6d | 0d | M.Latif-Arfani | 8h |
| 42 | 5.4 | Test data sync between local storage and cloud backend |  | 4h | 2025-11-14 08:30 | 2025-11-14 13:30 | 41 | 6d |  | M.Latif-Arfani | 4h |
| 43 | 6 | **Testing & Quality Assurance** |  | 2.25d? | 2025-11-19 13:30 | 2025-11-21 15:30 | 21 | 0d |  |  | 24h |
| 44 | 6.1 | Unit Testing |  | 1d? | 2025-11-19 13:30 | 2025-11-20 13:30 |  | 1.25d |  |  |  |
| 45 | 6.2 | Integration Testing |  | 1d? | 2025-11-19 13:30 | 2025-11-20 13:30 |  | 1.25d |  |  |  |
| 46 | 6.3 | Perform unit testing on Repository, ViewModel, and DAO layers |  | 6h | 2025-11-19 13:30 | 2025-11-20 10:30 | 21 | 0d |  | M.Latif-Arfani | 6h |
| 47 | 6.4 | Conduct UI testing using Jetpack Compose tests and Espresso |  | 6h | 2025-11-19 13:30 | 2025-11-20 10:30 | 28, 37 | 0d |  | M.Latif-Arfani | 6h |
| 48 | 6.5 | Run regression tests to ensure existing features work correctly |  | 6h | 2025-11-20 10:30 | 2025-11-21 08:30 | 46, 47 | 0d |  | M.Latif-Arfani | 6h |
| 49 | 6.6 | Profile performance and optimize app responsiveness |  | 6h | 2025-11-21 08:30 | 2025-11-21 15:30 | 48 | 0d |  | M.Latif-Arfani | 6h |
| 50 | 7 | Identify, report, and fix bugs before release |  | 6h | 2025-11-21 15:30 | 2025-11-24 13:30 | 43 | 0d |  | M.Latif-Arfani | 6h |
| 51 | 8 | Documentation | milestone | 0d | 2025-10-29 08:00 | 2025-10-29 08:00 |  | 12.5d |  |  |  |
| 52 | 9 | Deployment | milestone | 0d | 2025-10-29 08:00 | 2025-10-29 08:00 |  | 12.5d |  |  |  |
